# УПП

Schedule from MS Project, 2023-10-11 to 2024-05-13, 4 hours a day, costs in ₽, A marks actual dates.

## Calendars

- Стандартный: Mon-Fri 09:00-11:00, 16:00-18:00; Sat-Sun off. Exceptions (off unless hours are given): 2024-04-03 to 2024-04-21 09:00-11:00, 16:00-18:00.

## Resources

| Resource | Rate |
| --- | --- |
| Зубарев Дмитрий | 200 |
| Калиман Никита | 200 |
| Копылов Никита | 200 |
| Рудакова Елизавета | 200 |
| Перминов Николай | 200 |
| Командировка |  |
| Сотрудники заказчика |  |

## Schedule

| ID | WBS | Task | Type | Duration | Start | Finish | Predecessors | Complete | Remaining | Baseline start | Baseline finish | Baseline duration | Total slack | Resources | Work | Actual work | Cost | Baseline cost | Actual cost |
| --- | --- | --- | --- | --- | --- | --- | --- | --- | --- | --- | --- | --- | --- | --- | --- | --- | --- | --- | --- |
| 1 | 1 | **Get a blanket** |  | 160d? | 2023-10-11 A | 2024-05-13 |  | 28% | 115.5d? | 2023-10-11 | 2024-05-13 | 160d? | 0d |  | 1766h | 524h | 342,800 | 342,800 | 104,800 |
| 2 | 1.1 | **Формирование требований проекта** |  | 29d | 2023-10-11 A | 2023-11-20 A |  | 100% |  | 2023-10-11 | 2023-11-20 | 29d |  |  | 264h | 264h | 52,800 | 52,800 | 52,800 |
| 3 | 1.1.1 | **Формирование концепции проекта** |  | 17d | 2023-10-11 A | 2023-11-02 A |  | 100% |  | 2023-10-11 | 2023-11-02 | 17d |  |  | 156h | 156h | 31,200 | 31,200 | 31,200 |
| 4 | 1.1.1.1 | Провести интервью с участниками рынка | manual | 3d | 2023-10-11 A | 2023-10-13 A |  | 100% |  | 2023-10-11 | 2023-10-13 | 3d |  | Рудакова Елизавета | 12h | 12h | 2,400 | 2,400 | 2,400 |
| 5 | 1.1.1.2 | Обосновать необходимость проекта | manual | 1d | 2023-10-16 A | 2023-10-16 A | 4 | 100% |  | 2023-10-16 | 2023-10-16 | 1d |  | Рудакова Елизавета | 4h | 4h | 800 | 800 | 800 |
| 6 | 1.1.1.3 | Подготовить финансовую модель | manual | 3d | 2023-10-11 A | 2023-10-13 A |  | 100% |  | 2023-10-11 | 2023-10-13 | 3d |  | Перминов Николай | 12h | 12h | 2,400 | 2,400 | 2,400 |
| 7 | 1.1.1.4 | Проанализировать выгоды от реализации проекта | manual | 1d | 2023-10-16 A | 2023-10-16 A | 6 | 100% |  | 2023-10-16 | 2023-10-16 | 1d |  | Перминов Николай | 4h | 4h | 800 | 800 | 800 |
| 8 | 1.1.1.5 | Определить границы и ограничения реализации проекта | manual | 1d | 2023-10-17 A | 2023-10-17 A | 5, 7 | 100% |  | 2023-10-17 | 2023-10-17 | 1d |  | Перминов Николай; Рудакова Елизавета | 8h | 8h | 1,600 | 1,600 | 1,600 |
| 9 | 1.1.1.6 | **Провести интервью с заказчиком** |  | 3d | 2023-10-19 A | 2023-10-23 A | 8 | 100% |  | 2023-10-19 | 2023-10-23 | 3d |  |  | 36h | 36h | 7,200 | 7,200 | 7,200 |
| 10 | 1.1.1.6.1 | Определить пользователей системы | manual | 3d | 2023-10-19 A | 2023-10-23 A | 8 | 100% |  | 2023-10-19 | 2023-10-23 | 3d |  | Рудакова Елизавета | 12h | 12h | 2,400 | 2,400 | 2,400 |
| 11 | 1.1.1.6.2 | Определить сценарии использования системы | manual | 3d | 2023-10-19 A | 2023-10-23 A | 8 | 100% |  | 2023-10-19 | 2023-10-23 | 3d |  | Перминов Николай | 12h | 12h | 2,400 | 2,400 | 2,400 |
| 12 | 1.1.1.6.3 | Определить требования пользователей к системе | manual | 3d | 2023-10-19 A | 2023-10-23 A | 8 | 100% |  | 2023-10-19 | 2023-10-23 | 3d |  | Зубарев Дмитрий | 12h | 12h | 2,400 | 2,400 | 2,400 |
| 13 | 1.1.1.7 | Проанализировать нормативные документы РФ | manual | 4d | 2023-10-24 A | 2023-10-27 A | 9 | 100% |  | 2023-10-24 | 2023-10-27 | 4d |  | Зубарев Дмитрий | 16h | 16h | 3,200 | 3,200 | 3,200 |
| 14 | 1.1.1.8 | Написать документ “Концепция проекта” | manual | 4d | 2023-10-30 A | 2023-11-02 A | 9, 13, 8, 6 | 100% |  | 2023-10-30 | 2023-11-02 | 4d |  | Зубарев Дмитрий; Копылов Никита; Перминов Николай; Рудакова Елизавета | 64h | 64h | 12,800 | 12,800 | 12,800 |
| 15 | 1.1.2 | **Проведение анализа программных решений** |  | 5d | 2023-11-03 A | 2023-11-09 A | 14 | 100% |  | 2023-11-03 | 2023-11-09 | 5d |  |  | 20h | 20h | 4,000 | 4,000 | 4,000 |
| 16 | 1.1.2.1 | Проанализировать программные решения, позволяющие реализовать распределенное управление множеством устройств | manual | 1d | 2023-11-03 A | 2023-11-03 A | 14 | 100% |  | 2023-11-03 | 2023-11-03 | 1d |  | Перминов Николай | 4h | 4h | 800 | 800 | 800 |
| 17 | 1.1.2.2 | Проанализировать программное обеспечение вендинговых аппаратов | manual | 1d | 2023-11-06 A | 2023-11-06 A | 14 | 100% |  | 2023-11-06 | 2023-11-06 | 1d |  | Перминов Николай | 4h | 4h | 800 | 800 | 800 |
| 18 | 1.1.2.3 | Проанализировать программные возможности реализации сайта, адаптированного под мобильные устройства | manual | 1d | 2023-11-07 A | 2023-11-07 A | 14 | 100% |  | 2023-11-07 | 2023-11-07 | 1d |  | Перминов Николай | 4h | 4h | 800 | 800 | 800 |
| 19 | 1.1.2.4 | Проанализировать программные возможности хранения данных требующих дополнительной защиты, временных данных | manual | 1d | 2023-11-08 A | 2023-11-08 A | 14 | 100% |  | 2023-11-08 | 2023-11-08 | 1d |  | Перминов Николай | 4h | 4h | 800 | 800 | 800 |
| 20 | 1.1.2.5 | Проанализировать архитектурные возможности реализации проекта, клиент-серверного взаимодействия | manual | 1d | 2023-11-09 A | 2023-11-09 A | 14 | 100% |  | 2023-11-09 | 2023-11-09 | 1d |  | Перминов Николай | 4h | 4h | 800 | 800 | 800 |
| 21 | 1.1.3 | **Определение функциональных требований** |  | 3d | 2023-10-24 A | 2023-10-26 A |  | 100% |  | 2023-10-24 | 2023-10-26 | 3d |  |  | 12h | 12h | 2,400 | 2,400 | 2,400 |
| 22 | 1.1.3.1 | Внутреннее формирование требований | manual | 2d | 2023-10-24 A | 2023-10-25 A | 9 | 100% |  | 2023-10-24 | 2023-10-25 | 2d |  | Копылов Никита | 8h | 8h | 1,600 | 1,600 | 1,600 |
| 23 | 1.1.3.2 | Утвердить требования с заказчиком | manual | 1d | 2023-10-26 A | 2023-10-26 A | 22 | 100% |  | 2023-10-26 | 2023-10-26 | 1d |  | Копылов Никита | 4h | 4h | 800 | 800 | 800 |
| 24 | 1.1.4 | **Определение нефункциональных требований** |  | 3d | 2023-11-10 A | 2023-11-14 A |  | 100% |  | 2023-11-10 | 2023-11-14 | 3d |  |  | 12h | 12h | 2,400 | 2,400 | 2,400 |
| 25 | 1.1.4.1 | Внутреннее формирование требований | manual | 2d | 2023-11-10 A | 2023-11-13 A | 15 | 100% |  | 2023-11-10 | 2023-11-13 | 2d |  | Рудакова Елизавета | 8h | 8h | 1,600 | 1,600 | 1,600 |
| 26 | 1.1.4.2 | Утвердить требования с заказчиком | manual | 1d | 2023-11-14 A | 2023-11-14 A | 25 | 100% |  | 2023-11-14 | 2023-11-14 | 1d |  | Рудакова Елизавета | 4h | 4h | 800 | 800 | 800 |

| ID | WBS | Task | Type | Duration | Start | Finish | Predecessors | Complete | Remaining | Baseline start | Baseline finish | Baseline duration | Total slack | Resources | Work | Actual work | Cost | Baseline cost | Actual cost |
| --- | --- | --- | --- | --- | --- | --- | --- | --- | --- | --- | --- | --- | --- | --- | --- | --- | --- | --- | --- |
| 27 | 1.1.5 | **Формирование технического задания** |  | 17d | 2023-10-27 A | 2023-11-20 A |  | 100% |  | 2023-10-27 | 2023-11-20 | 17d |  |  | 64h | 64h | 12,800 | 12,800 | 12,800 |
| 28 | 1.1.5.1 | Определить функциональные возможности решения | manual | 1d | 2023-10-27 A | 2023-10-27 A | 23 | 100% |  | 2023-10-27 | 2023-10-27 | 1d |  | Копылов Никита | 4h | 4h | 800 | 800 | 800 |
| 29 | 1.1.5.2 | Определить нефункциональные требования к системе | manual | 1d | 2023-11-15 A | 2023-11-15 A | 24 | 100% |  | 2023-11-15 | 2023-11-15 | 1d |  | Рудакова Елизавета | 4h | 4h | 800 | 800 | 800 |
| 30 | 1.1.5.3 | Определить рамки реализуемой систем (что не требуется реализовывать) | manual | 1d | 2023-11-15 A | 2023-11-15 A | 9, 21, 24, 15 | 100% |  | 2023-11-15 | 2023-11-15 | 1d |  | Перминов Николай | 4h | 4h | 800 | 800 | 800 |
| 31 | 1.1.5.4 | Определить критерии одобрения разработанной системы | manual | 1d | 2023-11-03 A | 2023-11-03 A | 9 | 100% |  | 2023-11-03 | 2023-11-03 | 1d |  | Зубарев Дмитрий | 4h | 4h | 800 | 800 | 800 |
| 32 | 1.1.5.5 | Утвердить техническое задание | manual | 3d | 2023-11-16 A | 2023-11-20 A | 28, 29, 30, 31 | 100% |  | 2023-11-16 | 2023-11-20 | 3d |  | Зубарев Дмитрий; Копылов Никита; Перминов Николай; Рудакова Елизавета | 48h | 48h | 9,600 | 9,600 | 9,600 |
| 33 | 1.2 | **Проектирование разрабатываемой системы** |  | 19d | 2023-11-21 A | 2023-12-15 A |  | 100% |  | 2023-11-21 | 2023-12-15 | 19d |  |  | 148h | 148h | 29,600 | 29,600 | 29,600 |
| 34 | 1.2.1 | **Определение архитектуры разрабатываемой системы** |  | 8d | 2023-11-21 A | 2023-11-30 A |  | 100% |  | 2023-11-21 | 2023-11-30 | 8d |  |  | 32h | 32h | 6,400 | 6,400 | 6,400 |
| 35 | 1.2.1.1 | Изучить современные паттерны проектирования | manual | 1d | 2023-11-21 A | 2023-11-21 A | 27 | 100% |  | 2023-11-21 | 2023-11-21 | 1d |  | Перминов Николай | 4h | 4h | 800 | 800 | 800 |
| 36 | 1.2.1.2 | Определить достоинства и недостатки каждого паттерна | manual | 1d | 2023-11-22 A | 2023-11-22 A | 35 | 100% |  | 2023-11-22 | 2023-11-22 | 1d |  | Перминов Николай | 4h | 4h | 800 | 800 | 800 |
| 37 | 1.2.1.3 | Сформировать схему архитектуры в виде диаграммы архитектуры | manual | 3d | 2023-11-23 A | 2023-11-27 A | 36 | 100% |  | 2023-11-23 | 2023-11-27 | 3d |  | Перминов Николай | 12h | 12h | 2,400 | 2,400 | 2,400 |
| 38 | 1.2.1.4 | Сформировать модель взаимодействия системы в виде диаграммы ландшафта | manual | 3d | 2023-11-28 A | 2023-11-30 A | 37 | 100% |  | 2023-11-28 | 2023-11-30 | 3d |  | Перминов Николай | 12h | 12h | 2,400 | 2,400 | 2,400 |
| 39 | 1.2.2 | **Определение программных решений, используемых в ходе разработки системы** |  | 13d | 2023-11-28 A | 2023-12-14 A |  | 100% |  | 2023-11-28 | 2023-12-14 | 13d |  |  | 52h | 52h | 10,400 | 10,400 | 10,400 |
| 40 | 1.2.2.1 | Найти языки программирования и платформы, с помощью которых возможно реализовать выбранную архитектуру | manual | 3d | 2023-11-28 A | 2023-11-30 A | 37 | 100% |  | 2023-11-28 | 2023-11-30 | 3d |  | Копылов Никита | 12h | 12h | 2,400 | 2,400 | 2,400 |
| 41 | 1.2.2.2 | Определить достоинства и недостатки каждого варианта | manual | 2d | 2023-12-01 A | 2023-12-04 A | 40 | 100% |  | 2023-12-01 | 2023-12-04 | 2d |  | Копылов Никита | 8h | 8h | 1,600 | 1,600 | 1,600 |
| 42 | 1.2.2.3 | Определить навыки каждого разработчика для каждого варианта | manual | 2d | 2023-12-05 A | 2023-12-06 A | 41 | 100% |  | 2023-12-05 | 2023-12-06 | 2d |  | Копылов Никита | 8h | 8h | 1,600 | 1,600 | 1,600 |
| 43 | 1.2.2.4 | Подобрать под каждую подсистему стек технологий | manual | 1d | 2023-12-07 A | 2023-12-07 A | 42 | 100% |  | 2023-12-07 | 2023-12-07 | 1d |  | Перминов Николай | 4h | 4h | 800 | 800 | 800 |
| 44 | 1.2.2.5 | Определить архитектуру и стек технологий системы в виде диаграммы С4 | manual | 5d | 2023-12-08 A | 2023-12-14 A | 43 | 100% |  | 2023-12-08 | 2023-12-14 | 5d |  | Копылов Никита | 20h | 20h | 4,000 | 4,000 | 4,000 |
| 45 | 1.2.3 | **Формирование концепции визуального облика системы** |  | 11d | 2023-12-01 A | 2023-12-15 A |  | 100% |  | 2023-12-01 | 2023-12-15 | 11d |  |  | 44h | 44h | 8,800 | 8,800 | 8,800 |
| 46 | 1.2.3.1 | Описать UX-дизайн | manual | 3d | 2023-12-01 A | 2023-12-05 A | 38 | 100% |  | 2023-12-01 | 2023-12-05 | 3d |  | Перминов Николай | 12h | 12h | 2,400 | 2,400 | 2,400 |
| 47 | 1.2.3.2 | Описать стиль оформления интерфейса | manual | 5d | 2023-12-06 A | 2023-12-12 A | 46 | 100% |  | 2023-12-06 | 2023-12-12 | 5d |  | Рудакова Елизавета | 20h | 20h | 4,000 | 4,000 | 4,000 |
| 48 | 1.2.3.3 | Описать паттерны UI-дизайна | manual | 3d | 2023-12-13 A | 2023-12-15 A | 47 | 100% |  | 2023-12-13 | 2023-12-15 | 3d |  | Калиман Никита | 12h | 12h | 2,400 | 2,400 | 2,400 |
| 49 | 1.2.4 | Определение средств разработки и взаимодействия команды | manual | 5d | 2023-12-08 A | 2023-12-14 A | 43 | 100% |  | 2023-12-08 | 2023-12-14 | 5d |  | Перминов Николай | 20h | 20h | 4,000 | 4,000 | 4,000 |
| 50 | 1.3 | **Описание внутреннего распорядка разработки** |  | 11d | 2023-12-15 A | 2023-12-29 |  | 73% | 3d | 2023-12-15 | 2023-12-29 | 11d | 0d |  | 124h | 112h | 24,800 | 24,800 | 22,400 |
| 51 | 1.3.1 | **Формальное описание задач проекта в информационной системе управления проектами** |  | 11d | 2023-12-15 A | 2023-12-29 |  | 73% | 3d | 2023-12-15 | 2023-12-29 | 11d | 0d |  | 124h | 112h | 24,800 | 24,800 | 22,400 |
| 52 | 1.3.1.1 | Распределить задачи на группы, называемые проектами | manual | 5d | 2023-12-15 A | 2023-12-21 A | 44, 38, 43 | 100% |  | 2023-12-15 | 2023-12-21 | 5d |  | Зубарев Дмитрий; Копылов Никита; Перминов Николай; Рудакова Елизавета | 80h | 80h | 16,000 | 16,000 | 16,000 |
| 53 | 1.3.1.2 | Распределить проекты между разработчиками системы | manual | 1d | 2023-12-22 A | 2023-12-22 A | 52 | 100% |  | 2023-12-22 | 2023-12-22 | 1d |  | Зубарев Дмитрий; Копылов Никита; Перминов Николай; Рудакова Елизавета | 16h | 16h | 3,200 | 3,200 | 3,200 |
| 54 | 1.3.1.3 | Установить сроки выполнения задач | manual | 1d | 2023-12-25 A | 2023-12-25 A | 53 | 100% |  | 2023-12-25 | 2023-12-25 | 1d |  | Зубарев Дмитрий; Копылов Никита; Рудакова Елизавета | 12h | 12h | 2,400 | 2,400 | 2,400 |
| 55 | 1.3.1.4 | Сформировать календарный план | manual | 1d | 2023-12-26 A | 2023-12-26 A | 54 | 100% |  | 2023-12-26 | 2023-12-26 | 1d |  | Рудакова Елизавета | 4h | 4h | 800 | 800 | 800 |
| 56 | 1.3.1.5 | Утвердить календарный план | manual | 3d | 2023-12-27 | 2023-12-29 | 55 |  |  | 2023-12-27 | 2023-12-29 | 3d |  | Рудакова Елизавета | 12h |  | 2,400 | 2,400 |  |

| ID | WBS | Task | Type | Duration | Start | Finish | Predecessors | Baseline start | Baseline finish | Baseline duration | Total slack | Free slack | Resources | Work | Cost | Baseline cost |
| --- | --- | --- | --- | --- | --- | --- | --- | --- | --- | --- | --- | --- | --- | --- | --- | --- |
| 57 | 1.4 | **Разработка программного продукта** |  | 54d? | 2023-12-25 | 2024-03-07 |  | 2023-12-25 | 2024-03-07 | 54d? | 0d |  |  | 724h | 144,800 | 144,800 |
| 58 | 1.4.1 | **Разработка каждым участником проекта задач в соответствии с календарным планом и важностью задач** |  | 38d? | 2023-12-25 | 2024-02-14 |  | 2023-12-25 | 2024-02-14 | 38d? | 0d |  |  | 514h | 102,800 | 102,800 |
| 59 | 1.4.1.1 | **Разработка сервиса аутентификации клиентов** |  | 13d | 2023-12-25 | 2024-01-10 |  | 2023-12-25 | 2024-01-10 | 13d | 0d |  |  | 52h | 10,400 | 10,400 |
| 60 | 1.4.1.1.1 | Выбрать внешний сервис авторизации через СМС | manual | 2d | 2023-12-25 | 2023-12-26 |  | 2023-12-25 | 2023-12-26 | 2d |  |  | Перминов Николай | 8h | 1,600 | 1,600 |
| 61 | 1.4.1.1.2 | Написать модуль взаимодействия с внешним сервисом | manual | 3d | 2023-12-27 | 2023-12-29 | 60 | 2023-12-27 | 2023-12-29 | 3d |  |  | Перминов Николай | 12h | 2,400 | 2,400 |
| 62 | 1.4.1.1.3 | Написать модуль взаимодействия с пользовательским интерфейсом | manual | 3d | 2024-01-01 | 2024-01-03 | 61 | 2024-01-01 | 2024-01-03 | 3d |  |  | Перминов Николай | 12h | 2,400 | 2,400 |
| 63 | 1.4.1.1.4 | Написать модуль взаимодействия с мастер-сервисом | manual | 3d | 2024-01-04 | 2024-01-08 | 62 | 2024-01-04 | 2024-01-08 | 3d |  |  | Перминов Николай | 12h | 2,400 | 2,400 |
| 64 | 1.4.1.1.5 | Написать модуль взаимодействия с базой данных | manual | 2d | 2024-01-09 | 2024-01-10 | 63 | 2024-01-09 | 2024-01-10 | 2d |  |  | Перминов Николай | 8h | 1,600 | 1,600 |
| 65 | 1.4.1.2 | **Разработка сервиса для специалистов технического обслуживания** |  | 24d? | 2024-01-08 | 2024-02-08 |  | 2024-01-08 | 2024-02-08 | 24d? | 0d |  |  | 192h | 38,400 | 38,400 |
| 66 | 1.4.1.2.1 | Разработать представление карты, на которой будут отображаться вендинговые аппараты | manual | 1d | 2024-01-08 | 2024-01-08 |  | 2024-01-08 | 2024-01-08 | 1d |  |  | Копылов Никита; Калиман Никита | 8h | 1,600 | 1,600 |
| 67 | 1.4.1.2.2 | Добавить признак (требуется/не требуется обслуживание) для аппаратов на карте |  | 2d? | 2024-01-09 | 2024-01-10 | 66 | 2024-01-09 | 2024-01-10 | 2d? | 63d | 0d | Калиман Никита; Копылов Никита | 16h | 3,200 | 3,200 |
| 68 | 1.4.1.2.3 | Адаптировать интерфейс разрабатываемого веб-приложения под экраны различных устройств(мобильное устройство, ПК) |  | 5d? | 2024-01-11 | 2024-01-17 | 67 | 2024-01-11 | 2024-01-17 | 5d? | 63d | 0d | Калиман Никита; Копылов Никита | 40h | 8,000 | 8,000 |
| 69 | 1.4.1.2.4 | **Модуль взаимодействия с вендинговым аппаратом** |  | 16d? | 2024-01-18 | 2024-02-08 |  | 2024-01-18 | 2024-02-08 | 16d? | 63d |  |  | 128h | 25,600 | 25,600 |
| 70 | 1.4.1.2.4.1 | Реализовать возможность блокировки вендингового аппарата на момент обслуживания |  | 2d? | 2024-01-18 | 2024-01-19 | 68 | 2024-01-18 | 2024-01-19 | 2d? | 63d | 0d | Калиман Никита; Копылов Никита | 16h | 3,200 | 3,200 |
| 71 | 1.4.1.2.4.2 | Реализовать логику общения с выбранным вендинговым аппаратом(открыть/закрыть ячейку) |  | 7d? | 2024-01-22 | 2024-01-30 | 70 | 2024-01-22 | 2024-01-30 | 7d? | 63d | 0d | Калиман Никита; Копылов Никита | 56h | 11,200 | 11,200 |
| 72 | 1.4.1.2.4.3 | Реализовать возможность разблокировки автомата по окончании выполнения технических или профилактических работ |  | 7d? | 2024-01-31 | 2024-02-08 | 71 | 2024-01-31 | 2024-02-08 | 7d? | 63d |  | Калиман Никита; Копылов Никита | 56h | 11,200 | 11,200 |
| 73 | 1.4.1.3 | **Разработка сервиса управления автоматами** |  | 12d | 2024-01-11 | 2024-01-26 |  | 2024-01-11 | 2024-01-26 | 12d | 0d |  |  | 48h | 9,600 | 9,600 |
| 74 | 1.4.1.3.1 | **Написать сервис управления автоматами** |  | 8d | 2024-01-11 | 2024-01-22 |  | 2024-01-11 | 2024-01-22 | 8d | 0d |  |  | 32h | 6,400 | 6,400 |
| 75 | 1.4.1.3.1.1 | Написать модуль взаимодействия с базой данных | manual | 2d | 2024-01-11 | 2024-01-12 |  | 2024-01-11 | 2024-01-12 | 2d |  |  | Перминов Николай | 8h | 1,600 | 1,600 |
| 76 | 1.4.1.3.1.2 | Написать модуль взаимодействия с мастер-сервисом | manual | 3d | 2024-01-15 | 2024-01-17 | 75 | 2024-01-15 | 2024-01-17 | 3d |  |  | Перминов Николай | 12h | 2,400 | 2,400 |
| 77 | 1.4.1.3.1.3 | Написать модуль взаимодействия с конкретным автоматом | manual | 3d | 2024-01-18 | 2024-01-22 | 76 | 2024-01-18 | 2024-01-22 | 3d |  |  | Перминов Николай | 12h | 2,400 | 2,400 |
| 78 | 1.4.1.3.2 | **Написать сервис взаимодействия автомата с сервисом управления автоматами** |  | 4d | 2024-01-23 | 2024-01-26 |  | 2024-01-23 | 2024-01-26 | 4d | 0d |  |  | 16h | 3,200 | 3,200 |
| 79 | 1.4.1.3.2.1 | Написать модуль управления ячейками и другими функциями автомата | manual | 3d | 2024-01-23 | 2024-01-25 | 77 | 2024-01-23 | 2024-01-25 | 3d |  |  | Перминов Николай | 12h | 2,400 | 2,400 |
| 80 | 1.4.1.3.2.2 | Написать модуль взаимодействия автомата с сервисом управления автоматами | manual | 1d | 2024-01-26 | 2024-01-26 | 79 | 2024-01-26 | 2024-01-26 | 1d |  |  | Перминов Николай | 4h | 800 | 800 |

| ID | WBS | Task | Type | Duration | Start | Finish | Predecessors | Baseline start | Baseline finish | Baseline duration | Total slack | Free slack | Constraint | Resources | Work | Cost | Baseline cost |
| --- | --- | --- | --- | --- | --- | --- | --- | --- | --- | --- | --- | --- | --- | --- | --- | --- | --- |
| 81 | 1.4.1.4 | **Разработка банковского сервиса оплаты** |  | 20d? | 2024-01-08 | 2024-02-02 |  | 2024-01-08 | 2024-02-02 | 20d? | 0d |  |  |  | 80h | 16,000 | 16,000 |
| 82 | 1.4.1.4.1 | Изучить проведение банковских операций | manual | 2d | 2024-01-08 | 2024-01-09 |  | 2024-01-08 | 2024-01-09 | 2d |  |  |  | Зубарев Дмитрий | 8h | 1,600 | 1,600 |
| 83 | 1.4.1.4.2 | Изучить API и способы взаимодействия с конкретным банком |  | 1d | 2024-01-10 | 2024-01-10 | 82 | 2024-01-10 | 2024-01-10 | 1d | 77d | 0d |  | Зубарев Дмитрий | 4h | 800 | 800 |
| 84 | 1.4.1.4.3 | Написать модуль взаимодействия с внешним сервисом |  | 5d? | 2024-01-11 | 2024-01-17 | 83 | 2024-01-11 | 2024-01-17 | 5d? | 77d | 0d |  | Зубарев Дмитрий | 20h | 4,000 | 4,000 |
| 85 | 1.4.1.4.4 | Написать модуль взаимодействия с чековым аппаратом |  | 5d? | 2024-01-18 | 2024-01-24 | 84 | 2024-01-18 | 2024-01-24 | 5d? | 77d | 0d |  | Зубарев Дмитрий | 20h | 4,000 | 4,000 |
| 86 | 1.4.1.4.5 | Написать модуль взаимодействия с мастер-сервисом |  | 5d? | 2024-01-25 | 2024-01-31 | 85 | 2024-01-25 | 2024-01-31 | 5d? | 77d | 0d |  | Зубарев Дмитрий | 20h | 4,000 | 4,000 |
| 87 | 1.4.1.4.6 | Написать модуль взаимодействия с базой данных |  | 2d | 2024-02-01 | 2024-02-02 | 86 | 2024-02-01 | 2024-02-02 | 2d | 77d |  |  | Зубарев Дмитрий | 8h | 1,600 | 1,600 |
| 88 | 1.4.1.5 | **Разработка пользовательского интерфейса** |  | 13d | 2024-01-29 | 2024-02-14 |  | 2024-01-29 | 2024-02-14 | 13d | 0d |  |  |  | 46h | 9,200 | 9,200 |
| 89 | 1.4.1.5.1 | Разработка модуля описания интерфейсов системы | manual | 5d | 2024-01-29 | 2024-02-02 |  | 2024-01-29 | 2024-02-02 | 5d |  |  |  | Перминов Николай | 20h | 4,000 | 4,000 |
| 90 | 1.4.1.5.2 | Разработка модуля взаимодействия с API | manual | 5d | 2024-02-05 | 2024-02-09 | 89 | 2024-02-05 | 2024-02-09 | 5d |  |  |  | Перминов Николай | 20h | 4,000 | 4,000 |
| 91 | 1.4.1.5.3 | Настройка веб-сервера и прокси | manual | 2d | 2024-02-12 | 2024-02-13 | 90 | 2024-02-12 | 2024-02-13 | 2d |  |  |  | Перминов Николай [50%] | 4h | 800 | 800 |
| 92 | 1.4.1.5.4 | Настройка внешнего ПО для просмотра базы данных временных рядов | manual | 1d | 2024-02-14 | 2024-02-14 | 91 | 2024-02-14 | 2024-02-14 | 1d |  |  |  | Перминов Николай [50%] | 2h | 400 | 400 |
| 93 | 1.4.1.6 | **Разработка мастер-сервиса – связующее звено для всех вышеупомянутых сервисов** |  | 24d? | 2024-01-08 | 2024-02-08 |  | 2024-01-08 | 2024-02-08 | 24d? | 0d |  |  |  | 96h | 19,200 | 19,200 |
| 94 | 1.4.1.6.1 | Разработка модуля взаимодействия с главной базой данных | manual | 3d | 2024-01-08 | 2024-01-10 |  | 2024-01-08 | 2024-01-10 | 3d |  |  |  | Рудакова Елизавета | 12h | 2,400 | 2,400 |
| 95 | 1.4.1.6.2 | Разработка модуля взаимодействия с временной базой данных для сбора статистики |  | 5d | 2024-01-11 | 2024-01-17 | 94 | 2024-01-11 | 2024-01-17 | 5d | 63d | 0d |  | Рудакова Елизавета | 20h | 4,000 | 4,000 |
| 96 | 1.4.1.6.3 | Разработка модуля взаимодействия с базой данных для персональных данных |  | 1d | 2024-01-18 | 2024-01-18 | 95 | 2024-01-18 | 2024-01-18 | 1d | 63d | 0d |  | Рудакова Елизавета | 4h | 800 | 800 |
| 97 | 1.4.1.6.4 | Разработка модуля динамического ценообразования | milestone | 0d | 2024-01-18 | 2024-01-18 | 96 | 2024-01-18 | 2024-01-18 | 0d | 63d | 0d |  | Рудакова Елизавета |  |  |  |
| 98 | 1.4.1.6.5 | Разработка функций запросов RESTful API | manual | 15d? | 2024-01-19 | 2024-02-08 | 94, 95, 96, 97 | 2024-01-19 | 2024-02-08 | 15d? |  |  | finish no earlier than 2024-02-08 | Рудакова Елизавета | 60h | 12,000 | 12,000 |
| 99 | 1.4.2 | **Формирование промежуточных выпусков программного продукта** |  | 7d | 2024-02-09 | 2024-02-19 |  | 2024-02-09 | 2024-02-19 | 7d | 0d |  |  |  | 30h | 6,000 | 6,000 |
| 100 | 1.4.2.1 | Разработка алгоритмов автоматизированного развертывания | manual | 1d | 2024-02-09 | 2024-02-09 |  | 2024-02-09 | 2024-02-09 | 1d |  |  |  | Зубарев Дмитрий; Копылов Никита; Рудакова Елизавета | 12h | 2,400 | 2,400 |
| 101 | 1.4.2.2 | Подготовка и настройка серверов для развертывания продукта | manual | 3d | 2024-02-12 | 2024-02-14 | 100 | 2024-02-12 | 2024-02-14 | 3d |  |  |  | Перминов Николай [50%] | 6h | 1,200 | 1,200 |
| 102 | 1.4.2.3 | Настройка вспомогательного программного обеспечения | manual | 3d | 2024-02-15 | 2024-02-19 | 101, 88 | 2024-02-15 | 2024-02-19 | 3d |  |  |  | Перминов Николай | 12h | 2,400 | 2,400 |
| 103 | 1.4.3 | **Тестирование** |  | 10d | 2024-02-23 | 2024-03-07 |  | 2024-02-23 | 2024-03-07 | 10d | 0d |  |  |  | 180h | 36,000 | 36,000 |
| 104 | 1.4.3.1 | Разработка алгоритмов автоматического тестирования | manual | 10d | 2024-02-23 | 2024-03-07 | 59, 65, 73, 93 | 2024-02-23 | 2024-03-07 | 10d |  |  |  | Зубарев Дмитрий [50%]; Калиман Никита [50%]; Копылов Никита [50%]; Перминов Николай [25%]; Рудакова Елизавета [50%] | 90h | 18,000 | 18,000 |
| 105 | 1.4.3.2 | Проведение тестирования программного продукта | manual | 10d | 2024-02-23 | 2024-03-07 | 59, 65, 73, 93 | 2024-02-23 | 2024-03-07 | 10d |  |  |  | Зубарев Дмитрий [50%]; Калиман Никита [50%]; Копылов Никита [50%]; Перминов Николай [25%]; Рудакова Елизавета [50%] | 90h | 18,000 | 18,000 |

| ID | WBS | Task | Type | Duration | Start | Finish | Predecessors | Baseline start | Baseline finish | Baseline duration | Total slack | Resources | Work | Cost | Baseline cost |
| --- | --- | --- | --- | --- | --- | --- | --- | --- | --- | --- | --- | --- | --- | --- | --- |
| 106 | 1.5 | **Документирование** |  | 3d | 2024-02-20 | 2024-02-22 |  | 2024-02-20 | 2024-02-22 | 3d | 0d |  | 24h | 4,800 | 4,800 |
| 107 | 1.5.1 | Написание руководства развертывания системы | manual | 1d | 2024-02-22 | 2024-02-22 | 99 | 2024-02-22 | 2024-02-22 | 1d |  | Перминов Николай | 4h | 800 | 800 |
| 108 | 1.5.2 | Написание руководства пользователя техническим сервисом | manual | 2d | 2024-02-21 | 2024-02-22 | 65 | 2024-02-21 | 2024-02-22 | 2d |  | Копылов Никита | 8h | 1,600 | 1,600 |
| 109 | 1.5.3 | Написание руководства развертывания системы | manual | 1d | 2024-02-21 | 2024-02-21 | 99 | 2024-02-21 | 2024-02-21 | 1d |  | Перминов Николай | 4h | 800 | 800 |
| 110 | 1.5.4 | Написание руководства пользования аналитической системой | manual | 1d | 2024-02-20 | 2024-02-20 | 102 | 2024-02-20 | 2024-02-20 | 1d |  | Перминов Николай | 4h | 800 | 800 |
| 111 | 1.5.5 | Описание функций API сервисов в соответствии с нотацией OpenAPI | manual | 1d | 2024-02-22 | 2024-02-22 | 59, 65, 73, 93 | 2024-02-22 | 2024-02-22 | 1d |  | Рудакова Елизавета | 4h | 800 | 800 |
| 112 | 1.6 | **Проведение опытной эксплуатации** |  | 47d | 2024-02-23 | 2024-04-21 |  | 2024-02-23 | 2024-04-21 | 47d | 0d |  | 440h | 77,600 | 77,600 |
| 113 | 1.6.1 | **Проведение опытной эксплуатации системы в рамках лаборатории** |  | 21d | 2024-02-23 | 2024-03-22 |  | 2024-02-23 | 2024-03-22 | 21d | 0d |  | 124h | 24,800 | 24,800 |
| 114 | 1.6.1.1 | Подготовить аппаратное обеспечение автомата | manual | 10d | 2024-02-23 | 2024-03-07 | 73 | 2024-02-23 | 2024-03-07 | 10d |  | Перминов Николай [50%] | 20h | 4,000 | 4,000 |
| 115 | 1.6.1.2 | Установить модуль системы на вендинговый аппарат | manual | 1d | 2024-03-08 | 2024-03-08 | 114, 78 | 2024-03-08 | 2024-03-08 | 1d |  | Перминов Николай | 4h | 800 | 800 |
| 116 | 1.6.1.3 | Провести тестирование всех функций, описанных в техническом задании | manual | 10d | 2024-03-11 | 2024-03-22 | 115 | 2024-03-11 | 2024-03-22 | 10d |  | Зубарев Дмитрий [50%]; Калиман Никита [50%]; Копылов Никита [50%]; Перминов Николай [50%]; Рудакова Елизавета [50%] | 100h | 20,000 | 20,000 |
| 117 | 1.6.2 | Исправить критические ошибки | manual | 10d | 2024-03-11 | 2024-03-22 |  | 2024-03-11 | 2024-03-22 | 10d |  | Зубарев Дмитрий [50%]; Калиман Никита [50%]; Копылов Никита [50%]; Перминов Николай [50%]; Рудакова Елизавета [50%] | 100h | 20,000 | 20,000 |
| 118 | 1.6.3 | Сдача группового проекта | milestone, manual | 0d | 2024-03-25 | 2024-03-25 |  | 2024-03-25 | 2024-03-25 | 0d |  |  |  |  |  |
| 119 | 1.6.4 | **Проведение опытной эксплуатации системы в рамках тестирования в парках с привлечением потенциальных клиентов** |  | 21d | 2024-04-01 | 2024-04-21 |  | 2024-04-01 | 2024-04-21 | 21d | 0d |  | 216h | 32,800 | 32,800 |
| 120 | 1.6.4.1 | Установить автомат в парке с установленным ПО | manual | 2d | 2024-04-01 | 2024-04-02 | 117 | 2024-04-01 | 2024-04-02 | 2d |  | Перминов Николай; Командировка [0.1%] | 16h | 23,200 | 23,200 |
| 121 | 1.6.4.2 | Провести тестирование с привлечением консультанта | manual | 12d | 2024-04-03 | 2024-04-14 | 120 | 2024-04-03 | 2024-04-14 | 12d |  | Сотрудники заказчика [50%]; Перминов Николай [25%]; Рудакова Елизавета [25%]; Копылов Никита [25%] | 78h | 6,000 | 6,000 |
| 122 | 1.6.4.3 | Провести интервью с клиентами сервиса | manual | 12d | 2024-04-03 | 2024-04-14 | 120 | 2024-04-03 | 2024-04-14 | 12d |  | Сотрудники заказчика [50%] | 48h |  |  |
| 123 | 1.6.4.4 | Проведение тестирования без привлечения консультанта | manual | 7d | 2024-04-15 | 2024-04-21 | 122 | 2024-04-15 | 2024-04-21 | 7d |  | Перминов Николай [25%]; Копылов Никита [25%]; Рудакова Елизавета [25%]; Сотрудники заказчика [50%] | 46h | 3,600 | 3,600 |
| 124 | 1.6.4.5 | Провести интервью с клиентами сервиса | manual | 7d | 2024-04-15 | 2024-04-21 | 122 | 2024-04-15 | 2024-04-21 | 7d |  | Сотрудники заказчика [50%] | 28h |  |  |
| 125 | 1.7 | **Полноценная эксплуатация в рамках бизнес-модели** |  | 23d | 2024-04-15 | 2024-05-13 |  | 2024-04-15 | 2024-05-13 | 23d | 0d |  | 42h | 8,400 | 8,400 |
| 126 | 1.7.1 | Обучить технических специалистов | manual | 2d | 2024-04-15 | 2024-04-16 | 121 | 2024-04-15 | 2024-04-16 | 2d |  | Зубарев Дмитрий; Копылов Никита [75%]; Перминов Николай [75%]; Рудакова Елизавета [75%] | 26h | 5,200 | 5,200 |
| 127 | 1.7.2 | Поддержка работоспособности инфраструктуры проекта | manual | 16d | 2024-04-22 | 2024-05-13 | 124 | 2024-04-22 | 2024-05-13 | 16d |  | Перминов Николай [25%] | 16h | 3,200 | 3,200 |
| 128 | 1.8 | Сдача ВКР | milestone, manual | 0d | 2024-05-13 | 2024-05-13 |  | 2024-05-13 | 2024-05-13 | 0d |  |  |  |  |  |
